# CronogramaV1

How a schedule from MS Project changed from version to version. A marks actual dates.

## Version 1 (saved 2018-01-29, file CronogramaV1.mpp)

| ID | WBS | Task | Duration | Start | Finish | Predecessors | Total float | Constraint |
| --- | --- | --- | --- | --- | --- | --- | --- | --- |
| 1 | 1 | **Proyecto de Transmisiones** | 70d | 2018-01-29 | 2018-05-04 |  | 0d |  |
| 2 | 1.1 | **Analisis y Diseño** | 15d | 2018-01-29 | 2018-02-16 |  | 0d |  |
| 3 |  | Analizar solución del proyecto | 1d | 2018-01-29 | 2018-01-29 |  | 0d | start no earlier than 2018-01-29 |
| 4 | 1.1.2 | **Documentar historias de usuario** | 14d | 2018-01-30 | 2018-02-16 |  | 0d |  |
| 5 | 1.1.2.1 | **Transmision Importaciones** | 12d | 2018-01-30 | 2018-02-14 |  | 0d |  |
| 6 | 1.1.2.1.1 | **HU Tablero control transmisiones** | 6d | 2018-01-30 | 2018-02-06 |  | 0d |  |
| 7 |  | Modulo de tablero de control de transmisiones | 3d | 2018-01-30 | 2018-02-01 | 3 | 0d |  |
| 8 |  | Asignacion de perfiles de visualizacion(LA, Impo, Expo) | 0.5d | 2018-02-02 | 2018-02-02 | 7 | 0d |  |
| 9 |  | Modulo de pendientes | 0.5d | 2018-02-02 | 2018-02-02 | 8 | 0d |  |
| 10 |  | Modulo transmision aduanas(Teledespacho, TCI, archivo respuesta) | 2d | 2018-02-05 | 2018-02-06 | 9 | 0d |  |
| 11 | 1.1.2.1.2 | **HU Linea Aerea** | 2d | 2018-02-07 | 2018-02-08 |  | 0d |  |
| 12 |  | Consulta itineraios de LA | 0.5d | 2018-02-07 | 2018-02-07 | 10 | 0d |  |
| 13 |  | Indicador Manifiesto de carga provisional | 0.5d | 2018-02-07 | 2018-02-07 | 12 | 0d |  |
| 14 |  | Indicador Descarga de la mercancia | 0.5d | 2018-02-08 | 2018-02-08 | 13 | 0d |  |
| 15 |  | Indicador Bultos Faltos/Sobrantes y Actas ME | 0.5d | 2018-02-08 | 2018-02-08 | 14 | 0d |  |
| 16 | 1.1.2.1.3 | **HU Deposito Temporal** | 2d | 2018-02-09 | 2018-02-12 |  | 0d |  |
| 17 |  | Listar información | 1d | 2018-02-09 | 2018-02-09 | 15 | 0d |  |
| 18 |  | Indicador Manifiesto consolidado provisional | 0.5d | 2018-02-12 | 2018-02-12 | 17 | 0d |  |
| 19 |  | Indicador Manifiesto consolidado complementario | 0.5d | 2018-02-12 | 2018-02-12 | 18 | 0d |  |
| 20 | 1.1.2.1.4 | **HU Agente de Carga** | 2d | 2018-02-13 | 2018-02-14 |  | 0d |  |
| 21 |  | Listar información | 1d | 2018-02-13 | 2018-02-13 | 19 | 0d |  |
| 22 |  | Ingreso recepcion mercancia(LCL) | 0.5d | 2018-02-14 | 2018-02-14 | 21 | 0d |  |
| 23 |  | Indicador Bultos faltos/sobrantes y Actas ME(almacen) | 0.5d | 2018-02-14 | 2018-02-14 | 22 | 0d |  |
| 24 | 1.1.2.2 | **Transmision Exportaciones** | 2d | 2018-02-15 | 2018-02-16 |  | 0d |  |
| 25 |  | Consulta itinerario LA Exportación | 1d | 2018-02-15 | 2018-02-15 | 23 | 0d |  |
| 26 |  | HU Módulo de transmision canal | 1d | 2018-02-16 | 2018-02-16 | 25 | 0d |  |
| 27 | 1.2 | **Desarrollo** | 45d | 2018-02-19 | 2018-04-20 |  | 0d |  |
| 28 | 1.2.1 | **Transversales** | 8d | 2018-02-19 | 2018-02-28 |  | 10d |  |
| 29 |  | Generar ambiente de desarrollo | 3d | 2018-02-19 | 2018-02-21 | 26 | 9d |  |
| 30 |  | Desarrollo de la Arquitectura Tablero | 5d | 2018-02-22 | 2018-02-28 | 29 | 9d |  |
| 31 | 1.2.2 | **Transmisiones Importaciones** | 35d | 2018-02-19 | 2018-04-06 |  | 0d |  |
| 32 | 1.2.2.1 | **Desarrollo BD** | 25d | 2018-02-19 | 2018-03-23 |  | 0d |  |
| 33 |  | Crear logica de BD del Tablero | 10d | 2018-02-19 | 2018-03-02 | 26 | 0d |  |
| 34 |  | Creacion de SP de Mantenimiento Maestros | 5d | 2018-03-05 | 2018-03-09 | 33 | 0d |  |
| 35 | 1.2.2.1.3 | **Crear logica de BD de integracion** | 4d | 2018-03-12 | 2018-03-15 |  | 0d |  |
| 36 |  | Integracion con SITRADI | 2d | 2018-03-12 | 2018-03-13 | 34 | 0d |  |
| 37 |  | Integracion con HERMES | 2d | 2018-03-14 | 2018-03-15 | 36 | 0d |  |
| 38 | 1.2.2.1.4 | **Logica de Indicadores** | 6d | 2018-03-16 | 2018-03-23 |  | 0d |  |
| 39 |  | Linea aerea | 2d | 2018-03-16 | 2018-03-19 | 37 | 0d |  |
| 40 |  | Deposito temporal | 2d | 2018-03-20 | 2018-03-21 | 39 | 0d |  |
| 41 |  | Agente de carga | 2d | 2018-03-22 | 2018-03-23 | 40 | 0d |  |
| 42 | 1.2.2.2 | **Desarrollo Web** | 27d | 2018-03-01 | 2018-04-06 |  | 10d |  |
| 43 |  | Desarrollo del Tablero de control de Impo | 22d | 2018-03-01 | 2018-03-30 | 30 | 9d | start no earlier than 2018-02-20 |
| 44 |  | Desarrollo Modulo de registro horas llegada/descarga(GHA) | 5d | 2018-04-02 | 2018-04-06 | 43 | 9d |  |
| 45 |  | Desarrollo / Modificacion teledespacho | 10d | 2018-03-26 | 2018-04-06 | 41 | 0d |  |
| 46 | 1.2.3 | **Transmisiones Exportaciones** | 10d | 2018-04-09 | 2018-04-20 |  | 10d |  |
| 47 |  | Migración transmision de expo | 10d | 2018-04-09 | 2018-04-20 | 44 | 9d |  |
| 48 | 1.3 | **Pruebas** | 5d | 2018-04-18 | 2018-04-24 |  | 0d |  |
| 49 |  | Pruebas unitarias | 2d | 2018-04-18 | 2018-04-19 | 45FS+7d | 0d |  |
| 50 |  | Pruebas funcionales | 3d | 2018-04-20 | 2018-04-24 | 49 | 0d |  |
| 51 | 1.4 | **Despliegue** | 8d | 2018-04-25 | 2018-05-04 |  | 0d |  |
| 52 |  | Pase a produccion | 2d | 2018-04-25 | 2018-04-26 | 50 | 0d | start no earlier than 2018-04-12 |
| 53 |  | Soporte posproduccion | 2d | 2018-04-27 | 2018-05-04 | 52 | 0d | start no earlier than 2018-04-13 |

## Version 2 (saved 2018-02-05, file CronogramaV2.mpp)

Last finish 2018-05-04 → 2018-04-30 (-4d).

Added:

| ID | Task | Duration | Start | Finish | Predecessors | Constraint | Resources |
| --- | --- | --- | --- | --- | --- | --- | --- |
| 3 | Pre-Análisis | 21d | 2018-01-02 09:00 | 2018-01-30 19:00 |  | start no earlier than 2018-01-02 09:00 | Recurso0 |
| 28 | HU Módulo de registro de documentso vinculados | 0.5d | 2018-02-16 09:00 | 2018-02-16 13:00 | 27 |  |  |
| 29 | HU Termino de embarque | 0.5d | 2018-02-16 15:00 | 2018-02-16 19:00 | 28 |  |  |
| 38 | Crear logica de BD del Tablero Expo | 5d | 2018-03-09 09:00 | 2018-03-15 19:00 | 37 |  |  |
| 52 | Registro del manifiesto de carga de los documentos vinculados | 3d | 2018-04-13 09:00 | 2018-04-17 19:00 | 49 |  | Recurso2 |
| 53 | Transmisión del manifiesto de carga consolidado | 5d? | 2018-04-18 09:00 | 2018-04-24 19:00 | 52 |  | Recurso2 |

Changed:

| ID | Task | Start | Finish | Duration | Total float | Predecessors | Other |
| --- | --- | --- | --- | --- | --- | --- | --- |
| 1 | **Proyecto de Transmisiones** | 2018-01-29 → 2018-01-02 09:00 (-27d) | 2018-05-04 → 2018-04-30 19:00 (-4d) | 70d → 85d? |  |  |  |
| 2 | **Analisis y Diseño** | 2018-01-29 → 2018-01-02 09:00 (-27d) | 2018-02-16 → 2018-02-16 19:00 | 15d → 34d |  |  | resources Recurso0 → none |
| 4 | Analizar solución del proyecto | 2018-01-29 → 2018-01-31 09:00 (+2d) | 2018-01-29 → 2018-01-31 19:00 (+2d) |  |  | none → 3 | constraint start no earlier than 2018-01-29 → start no earlier than 2018-01-31 09:00; resources none → Recurso0 |
| 5 | **Documentar historias de usuario** | 2018-01-30 → 2018-02-01 09:00 (+2d) | 2018-02-16 → 2018-02-16 19:00 | 14d → 12d |  |  |  |
| 6 | **Transmision Importaciones** | 2018-01-30 → 2018-02-01 09:00 (+2d) | 2018-02-14 → 2018-02-14 19:00 | 12d → 10d |  |  |  |
| 7 | **HU Tablero control transmisiones** | 2018-01-30 → 2018-02-01 09:00 (+2d) | 2018-02-06 → 2018-02-07 19:00 (+1d) | 6d → 5d |  |  |  |
| 8 | Modulo de tablero de control de transmisiones | 2018-01-30 → 2018-02-01 09:00 (+2d) | 2018-02-01 → 2018-02-02 19:00 (+1d) | 3d → 2d |  |  |  |
| 9 | Asignacion de perfiles de visualizacion(LA, Impo, Expo) | 2018-02-02 → 2018-02-05 09:00 (+3d) | 2018-02-02 → 2018-02-05 13:00 (+3d) |  |  |  |  |
| 10 | Modulo de pendientes | 2018-02-02 → 2018-02-05 15:00 (+3d) | 2018-02-02 → 2018-02-05 19:00 (+3d) |  |  |  |  |
| 11 | Modulo transmision aduanas(Teledespacho, TCI, archivo respuesta) | 2018-02-05 → 2018-02-06 09:00 (+1d) | 2018-02-06 → 2018-02-07 19:00 (+1d) |  |  |  |  |
| 12 | **HU Linea Aerea** | 2018-02-07 → 2018-02-08 09:00 (+1d) | 2018-02-08 → 2018-02-09 19:00 (+1d) |  |  |  |  |
| 13 | Consulta itineraios de LA | 2018-02-07 → 2018-02-08 09:00 (+1d) | 2018-02-07 → 2018-02-08 13:00 (+1d) |  |  |  |  |
| 14 | Indicador Manifiesto de carga provisional | 2018-02-07 → 2018-02-08 15:00 (+1d) | 2018-02-07 → 2018-02-08 19:00 (+1d) |  |  |  |  |
| 15 | Indicador Descarga de la mercancia | 2018-02-08 → 2018-02-09 09:00 (+1d) | 2018-02-08 → 2018-02-09 13:00 (+1d) |  |  |  |  |
| 16 | Indicador Bultos Faltos/Sobrantes y Actas ME | 2018-02-08 → 2018-02-09 15:00 (+1d) | 2018-02-08 → 2018-02-09 19:00 (+1d) |  |  |  |  |
| 17 | **HU Deposito Temporal** | 2018-02-09 → 2018-02-12 09:00 (+3d) | 2018-02-12 → 2018-02-13 13:00 (+1d) | 2d → 1.5d |  |  |  |
| 18 | Listar información | 2018-02-09 → 2018-02-12 09:00 (+3d) | 2018-02-09 → 2018-02-12 13:00 (+3d) | 1d → 0.5d |  |  |  |
| 19 | Indicador Manifiesto consolidado provisional | 2018-02-12 → 2018-02-12 15:00 | 2018-02-12 → 2018-02-12 19:00 |  |  |  |  |
| 20 | Indicador Manifiesto consolidado complementario | 2018-02-12 → 2018-02-13 09:00 (+1d) | 2018-02-12 → 2018-02-13 13:00 (+1d) |  |  |  |  |
| 21 | **HU Agente de Carga** | 2018-02-13 → 2018-02-13 15:00 | 2018-02-14 → 2018-02-14 19:00 | 2d → 1.5d |  |  |  |
| 22 | Listar información | 2018-02-13 → 2018-02-13 15:00 | 2018-02-13 → 2018-02-13 19:00 | 1d → 0.5d |  |  |  |
| 23 | Ingreso recepcion mercancia(LCL) | 2018-02-14 → 2018-02-14 09:00 | 2018-02-14 → 2018-02-14 13:00 |  |  |  |  |
| 24 | Indicador Bultos faltos/sobrantes y Actas ME(almacen) | 2018-02-14 → 2018-02-14 15:00 | 2018-02-14 → 2018-02-14 19:00 |  |  |  |  |
| 25 | **Transmision Exportaciones** | 2018-02-15 → 2018-02-15 09:00 | 2018-02-16 → 2018-02-16 19:00 |  |  |  |  |
| 26 | Consulta itinerario LA Exportación | 2018-02-15 → 2018-02-15 09:00 | 2018-02-15 → 2018-02-15 13:00 | 1d → 0.5d |  |  |  |
| 27 | HU Módulo de transmision canal | 2018-02-16 → 2018-02-15 15:00 (-1d) | 2018-02-16 → 2018-02-15 19:00 (-1d) | 1d → 0.5d |  |  |  |
| 30 | **Desarrollo** | 2018-02-19 → 2018-02-16 09:00 (-3d) | 2018-04-20 → 2018-04-24 19:00 (+4d) | 45d → 48d? | 0d → 1d |  |  |
| 31 | **Transversales** | 2018-02-19 → 2018-02-19 09:00 | 2018-02-28 → 2018-02-28 19:00 |  | 10d → 0d |  |  |
| 32 | Generar ambiente de desarrollo | 2018-02-19 → 2018-02-19 09:00 | 2018-02-21 → 2018-02-21 19:00 |  | 9d → 0d | 27 → 29 |  |
| 33 | Desarrollo de la Arquitectura Tablero | 2018-02-22 → 2018-02-22 09:00 | 2018-02-28 → 2018-02-28 19:00 |  | 9d → 0d |  |  |
| 34 | **Transmisiones Importaciones** | 2018-02-19 → 2018-02-16 09:00 (-3d) | 2018-04-06 → 2018-04-12 19:00 (+6d) | 35d → 40d | 0d → 4d |  |  |
| 35 | **Desarrollo BD** | 2018-02-19 → 2018-02-16 09:00 (-3d) | 2018-03-23 → 2018-03-29 19:00 (+6d) | 25d → 30d | 0d → 4d |  |  |
| 36 | Crear logica de BD del Tablero | 2018-02-19 → 2018-02-16 09:00 (-3d) | 2018-03-02 → 2018-03-01 19:00 (-1d) |  | 0d → 4d |  |  |
| 37 | Creacion de SP de Mantenimiento Maestros | 2018-03-05 → 2018-03-02 09:00 (-3d) | 2018-03-09 → 2018-03-08 19:00 (-1d) |  | 0d → 4d |  |  |
| 39 | **Crear logica de BD de integracion** | 2018-03-12 → 2018-03-16 09:00 (+4d) | 2018-03-15 → 2018-03-21 19:00 (+6d) |  | 0d → 4d |  |  |
| 40 | Integracion con SITRADI | 2018-03-12 → 2018-03-16 09:00 (+4d) | 2018-03-13 → 2018-03-19 19:00 (+6d) |  | 0d → 4d | 37 → 38 |  |
| 41 | Integracion con HERMES | 2018-03-14 → 2018-03-20 09:00 (+6d) | 2018-03-15 → 2018-03-21 19:00 (+6d) |  | 0d → 4d |  |  |
| 42 | **Logica de Indicadores** | 2018-03-16 → 2018-03-22 09:00 (+6d) | 2018-03-23 → 2018-03-29 19:00 (+6d) |  | 0d → 4d |  |  |
| 43 | Linea aerea | 2018-03-16 → 2018-03-22 09:00 (+6d) | 2018-03-19 → 2018-03-23 19:00 (+4d) |  | 0d → 4d |  |  |
| 44 | Deposito temporal | 2018-03-20 → 2018-03-26 09:00 (+6d) | 2018-03-21 → 2018-03-27 19:00 (+6d) |  | 0d → 4d |  |  |
| 45 | Agente de carga | 2018-03-22 → 2018-03-28 09:00 (+6d) | 2018-03-23 → 2018-03-29 19:00 (+6d) |  | 0d → 4d |  |  |
| 46 | **Desarrollo Web** | 2018-03-01 → 2018-03-01 09:00 | 2018-04-06 → 2018-04-12 19:00 (+6d) | 27d → 31d | 10d → 0d |  |  |
| 47 | Desarrollo del Tablero de control de Impo | 2018-03-01 → 2018-03-01 09:00 | 2018-03-30 → 2018-03-30 19:00 |  | 9d → 0d |  | constraint start no earlier than 2018-02-20 → start no earlier than 2018-02-20 09:00 |
| 48 | Desarrollo Modulo de registro horas llegada/descarga(GHA) | 2018-04-02 → 2018-04-02 09:00 | 2018-04-06 → 2018-04-06 19:00 |  | 9d → 0d |  |  |
| 49 | Desarrollo / Modificacion teledespacho | 2018-03-26 → 2018-03-30 09:00 (+4d) | 2018-04-06 → 2018-04-12 19:00 (+6d) |  | 0d → 4d |  |  |
| 50 | **Transmisiones Exportaciones** | 2018-04-09 → 2018-04-09 09:00 | 2018-04-20 → 2018-04-24 19:00 (+4d) | 10d → 12d? | 10d → 0d |  |  |
| 51 | Migración transmision de expo | 2018-04-09 → 2018-04-09 09:00 | 2018-04-20 → 2018-04-13 19:00 (-7d) | 10d → 5d | 9d → 0d |  |  |
| 54 | **Pruebas** | 2018-04-18 → 2018-04-16 09:00 (-2d) | 2018-04-24 → 2018-04-23 19:00 (-1d) | 5d → 6d |  |  |  |
| 55 | Pruebas unitarias | 2018-04-18 → 2018-04-16 09:00 (-2d) | 2018-04-19 → 2018-04-18 19:00 (-1d) | 2d → 3d |  | 49FS+7d → 51 | resources Recurso2 → Recurso1; Resurso2 |
| 56 | Pruebas funcionales | 2018-04-20 → 2018-04-19 09:00 (-1d) | 2018-04-24 → 2018-04-23 19:00 (-1d) |  |  |  | resources Recurso2 → Recurso2; Resurso2 |
| 57 | **Despliegue** | 2018-04-25 → 2018-04-23 19:00 (-2d) | 2018-05-04 → 2018-04-30 19:00 (-4d) | 8d → 5d |  |  |  |
| 58 | Pase a produccion | 2018-04-25 → 2018-04-23 19:00 (-2d) | 2018-04-26 → 2018-04-26 19:00 |  |  |  | constraint start no earlier than 2018-04-12 → start no earlier than 2018-04-12 09:00 |
| 59 | Soporte posproduccion | 2018-04-27 → 2018-04-27 09:00 | 2018-05-04 → 2018-04-30 19:00 (-4d) |  |  |  | constraint start no earlier than 2018-04-13 → start no earlier than 2018-04-13 09:00 |

## Version 3 (saved 2018-02-26, file CronogramaV3.mpp)

Last finish stays 2018-04-30. Complete tasks 0 → 9.

Changed:

| ID | Task | Start | Finish | Complete | Total float |
| --- | --- | --- | --- | --- | --- |
| 1 | **Proyecto de Transmisiones** | 2018-01-02 09:00 A |  | 0% → 27% |  |
| 2 | **Analisis y Diseño** | 2018-01-02 09:00 A |  | 0% → 76% | 0d → 51d |
| 3 | Pre-Análisis | 2018-01-02 09:00 A | 2018-01-30 19:00 A | 0% → 100% | 0d → none |
| 4 | Analizar solución del proyecto | 2018-01-31 09:00 A | 2018-01-31 19:00 A | 0% → 100% | 0d → none |
| 5 | **Documentar historias de usuario** | 2018-02-01 09:00 A |  | 0% → 33% | 0d → 51d |
| 6 | **Transmision Importaciones** | 2018-02-01 09:00 A |  | 0% → 35% | 0d → 53d |
| 7 | **HU Tablero control transmisiones** | 2018-02-01 09:00 A |  | 0% → 60% | 0d → 58d |
| 8 | Modulo de tablero de control de transmisiones | 2018-02-01 09:00 A | 2018-02-02 19:00 A | 0% → 100% | 0d → none |
| 9 | Asignacion de perfiles de visualizacion(LA, Impo, Expo) | 2018-02-05 09:00 A | 2018-02-05 13:00 A | 0% → 100% | 0d → none |
| 10 | Modulo de pendientes | 2018-02-05 15:00 A | 2018-02-05 19:00 A | 0% → 100% | 0d → none |
| 12 | **HU Linea Aerea** | 2018-02-08 09:00 A |  | 0% → 25% | 0d → 53d |
| 13 | Consulta itineraios de LA | 2018-02-08 09:00 A | 2018-02-08 13:00 A | 0% → 100% | 0d → none |
| 25 | **Transmision Exportaciones** | 2018-02-15 09:00 A |  | 0% → 25% | 0d → 51d |
| 26 | Consulta itinerario LA Exportación | 2018-02-15 09:00 A | 2018-02-15 13:00 A | 0% → 100% | 0d → none |
| 30 | **Desarrollo** | 2018-02-16 09:00 A |  | 0% → 10% | 1d → 4d |
| 31 | **Transversales** | 2018-02-19 09:00 A | 2018-02-28 19:00 A | 0% → 100% | 0d → none |
| 32 | Generar ambiente de desarrollo | 2018-02-19 09:00 A | 2018-02-21 19:00 A | 0% → 100% | 0d → none |
| 33 | Desarrollo de la Arquitectura Tablero | 2018-02-22 09:00 A | 2018-02-28 19:00 A | 0% → 100% | 0d → none |
| 34 | **Transmisiones Importaciones** | 2018-02-16 09:00 A |  | 0% → 1% |  |
| 35 | **Desarrollo BD** | 2018-02-16 09:00 A |  | 0% → 3% |  |
| 36 | Crear logica de BD del Tablero | 2018-02-16 09:00 A |  | 0% → 10% |  |
