# Cronograma2

How a schedule from MS Project changed from version to version. A marks actual dates.

## Version 1 (saved 2018-04-02, file Proyecto Transmision - CronogramaV3 - YERY.mpp)

| ID | WBS | Task | Duration | Start | Finish | Predecessors | Complete | Total float |
| --- | --- | --- | --- | --- | --- | --- | --- | --- |
| 1 | 1 | **Control Tablero Transmisiones** | 63d | 2018-02-12 A | 2018-05-11 |  | 50% | 0d |
| 2 | 1.1 | **Sprint 1** | 7d | 2018-02-12 A | 2018-02-20 A |  | 100% |  |
| 3 |  | Seguir y facilitar desarrollo del producto S1 | 7d | 2018-02-12 A | 2018-02-20 A |  | 100% |  |
| 4 |  | Fuentes consolidadas | 2d | 2018-02-12 A | 2018-02-13 A |  | 100% |  |
| 5 |  | Control de acceso a usuarios | 2d | 2018-02-14 A | 2018-02-15 A | 4 | 100% |  |
| 6 |  | Servicio web de acceso a datos | 2d | 2018-02-16 A | 2018-02-19 A | 5 | 100% |  |
| 7 |  | Estructurar tablero de control de transmisiones | 1d | 2018-02-20 A | 2018-02-20 A | 6 | 100% |  |
| 8 | 1.2 | **Sprint 2** | 13d | 2018-02-21 A | 2018-03-09 A |  | 100% |  |
| 9 |  | Seguir y facilitar desarrollo del producto S2 | 13d | 2018-02-21 A | 2018-03-09 A | 7 | 100% |  |
| 10 |  | Visualizar vuelos en el tablero GHA | 5d | 2018-02-21 A | 2018-02-27 A | 7 | 100% |  |
| 11 |  | Registrar datos manifiesto de ingreso | 5d | 2018-02-28 A | 2018-03-06 A | 10 | 100% |  |
| 12 |  | Registrar datos manifiesto de salida | 3d | 2018-03-07 A | 2018-03-09 A | 11, 17 | 100% |  |
| 13 | 1.3 | **Sprint 3** | 33d | 2018-02-12 A | 2018-03-28 |  | 83% | 0d |
| 14 |  | Seguir y facilitar desarrollo del producto S3 | 13d | 2018-03-12 A | 2018-03-28 | 12 | 77% | 0d |
| 15 |  | Leer buzon correos documentos vinculados | 4d | 2018-03-12 A | 2018-03-15 A | 12 | 100% |  |
| 16 |  | Actualizar proceso documentos vinculados | 5d | 2018-03-16 A | 2018-03-22 A | 15 | 100% |  |
| 17 |  | Formulario de control de acceso de usuario al tablero | 1d | 2018-03-12 A | 2018-03-12 A |  | 100% |  |
| 18 |  | Como GHA quiero visualizar el listado de mis vuelos | 1d | 2018-03-12 A | 2018-03-13 A | 17 | 100% |  |
| 19 |  | Como GHA quiero visualizar mis obligaciones | 1d | 2018-03-12 A | 2018-03-13 A | 18 | 100% |  |
| 20 |  | Como GHA quiero visualizar el avance de mis obligaciones | 1d | 2018-03-12 A | 2018-03-14 A | 19 | 100% |  |
| 21 |  | Como GHA quiero visualizar el estado de mis obligaciones a través de mis indicadores | 1d | 2018-03-12 A | 2018-03-14 A | 20 | 100% |  |
| 22 |  | Como GHA quiero ller el ingreso de la fecha de llegada de un vuelo por Web Aduana | 1d | 2018-02-12 A | 2018-03-15 A | 21 | 100% |  |
| 23 |  | Como GHA quiero capturar y registrar el ingreso de la fecha de llegada de un vuelo | 1d | 2018-03-12 A | 2018-03-15 A | 22 | 100% |  |
| 24 |  | Como GHA quiero leer el ingreso de la fecha del termino de descarga por Web Aduana | 1d | 2018-03-12 A | 2018-03-16 A | 23 | 100% |  |
| 25 |  | Como GHA quiero capturar y almacenar el "registro de la fecha de termino de descarga" | 1d | 2018-03-12 A | 2018-03-16 A | 24 | 100% |  |
| 26 |  | Como GHA quiero leer el ingreso del termino de embarque por Web Aduana | 1d | 2018-03-12 A | 2018-03-19 A | 25 | 100% |  |
| 27 |  | Como GHA quiero capturar y almacenar el "registro de término de embarque" | 1d | 2018-03-12 A | 2018-03-19 A | 26 | 100% |  |
| 28 |  | Como GHA quiero leer el ingreso de la fecha de autorización de la carga via Web Aduana | 1d | 2018-02-12 A | 2018-03-20 A | 27 | 100% |  |
| 29 |  | Como GHA quiero capturar y almacenar e "registro de autorización de la carga" | 7d | 2018-02-12 A | 2018-03-28 | 28 | 50% | 0d |
| 30 |  | Transmisión de archivos a Aduanas por Teledespacho 1 | 4d | 2018-03-23 A | 2018-03-28 | 16 | 70% | 0d |
| 31 | 1.4 | **Sprint 4** | 10d | 2018-04-02 | 2018-04-13 |  |  | 0d |
| 32 |  | Seguir y facilitar desarrollo del producto S4 | 10d | 2018-04-02 | 2018-04-13 | 14 |  | 0d |
| 33 |  | Transmisión de archivos a Aduanas por Teledespacho 2 | 10d | 2018-04-02 | 2018-04-13 | 30 |  | 0d |
| 34 |  | Visualizar el listado de mis vuelos | 1d | 2018-04-02 | 2018-04-02 | 29 |  | 0d |
| 35 |  | Visualizar el listado de mis obligaciones por vuelo | 1d | 2018-04-03 | 2018-04-03 | 34 |  | 0d |
| 36 |  | Visualizar el listado de mis guías por vuelo | 1d | 2018-04-04 | 2018-04-04 | 35 |  | 0d |
| 37 |  | Visualizar el listado de mis obligaciones por guía de un vuelo | 1d | 2018-04-05 | 2018-04-05 | 36 |  | 0d |
| 38 |  | Visualizar el avance de mis obligaciones por guía de un vuelo | 1d | 2018-04-06 | 2018-04-06 | 37 |  | 0d |
| 39 |  | Visualizar el estado de mis obligaciones de una guía a través de mis indicadores | 1d | 2018-04-09 | 2018-04-09 | 38 |  | 0d |
| 40 |  | Visualizar el avance de mis obligaciones por vuelo | 1d | 2018-04-10 | 2018-04-10 | 39 |  | 0d |
| 41 |  | Visualizar el estado de mis obligaciones por vuelo a través de mis indicadores | 1d | 2018-04-11 | 2018-04-11 | 40 |  | 0d |
| 42 |  | Asignar un responsable por vuelo | 0.5d | 2018-04-12 | 2018-04-12 | 41 |  | 0d |
| 43 |  | Re asignar un responsable por vuelo | 0.5d | 2018-04-12 | 2018-04-12 | 42 |  | 0d |
| 44 |  | Visualizar los errores de mis transmisiones por guía de un vuelo | 0.5d | 2018-04-13 | 2018-04-13 | 43 |  | 0d |
| 45 |  | Cerrar un grupo de procesos de una guía | 0.5d | 2018-04-13 | 2018-04-13 | 44 |  | 0d |
| 46 | 1.5 | **Sprint 5** | 10d | 2018-04-16 | 2018-04-27 |  |  | 0d |
| 47 |  | Seguir y facilitar desarrollo del producto S5 | 10d | 2018-04-16 | 2018-04-27 | 32 |  | 0d |
| 48 |  | Visualizar listado de guias y responsabilidades EXPO | 2d | 2018-04-16 | 2018-04-17 | 31 |  | 0d |
| 49 |  | Visualizar indicadores del tablero GHA | 2d | 2018-04-18 | 2018-04-19 | 48 |  | 0d |
| 50 |  | Visualizar indicadores del tablero IMPO | 2d | 2018-04-20 | 2018-04-23 | 49 |  | 0d |
| 51 |  | Visualizar indicadores del tablero EXPO | 1d | 2018-04-24 | 2018-04-24 | 50 |  | 0d |
| 52 |  | Modificar estado del vuelo | 1d | 2018-04-25 | 2018-04-25 | 51 |  | 0d |
| 53 |  | Modificar estado de las guias | 1d | 2018-04-26 | 2018-04-26 | 52 |  | 0d |
| 54 |  | Modificar estado de las responsabilidades | 1d | 2018-04-27 | 2018-04-27 | 53 |  | 0d |
| 55 | 1.6 | **Sprint 6** | 10d | 2018-04-30 | 2018-05-11 |  |  | 0d |
| 56 |  | Seguir y facilitar desarrollo del producto S6 | 10d | 2018-04-30 | 2018-05-11 | 47 |  | 0d |
| 57 |  | Afinar diseño del tablero | 3d | 2018-04-30 | 2018-05-02 | 46 |  | 0d |
| 58 |  | Ingresar y/o actualizar bd de tablas maestras | 3d | 2018-05-03 | 2018-05-07 | 57 |  | 0d |
| 59 |  | Realizar pruebas funcionales | 4d | 2018-05-08 | 2018-05-11 | 58 |  | 0d |

## Version 2 (saved 2018-04-02, file Proyecto Transmision - CronogramaV3_1004.mpp)

Last finish stays 2018-05-11.

Changed:

| ID | Task | Other |
| --- | --- | --- |
| 1 | **Control Tablero Transmisiones** | baseline finish 2018-05-08 → 2018-05-11 |
| 13 | **Sprint 3** | baseline start 2018-03-12 → 2018-02-12; baseline finish 2018-03-23 → 2018-03-28 |
| 14 | Seguir y facilitar desarrollo del producto S3 | baseline finish 2018-03-23 → 2018-03-28 |
| 16 | Actualizar proceso documentos vinculados | baseline finish 2018-03-21 → 2018-03-22 |
| 17 | Formulario de control de acceso de usuario al tablero | baseline start none → 2018-03-12; baseline finish none → 2018-03-12 |
| 18 | Como GHA quiero visualizar el listado de mis vuelos | baseline start none → 2018-03-12; baseline finish none → 2018-03-13 |
| 19 | Como GHA quiero visualizar mis obligaciones | baseline start none → 2018-03-12; baseline finish none → 2018-03-13 |
| 20 | Como GHA quiero visualizar el avance de mis obligaciones | baseline start none → 2018-03-12; baseline finish none → 2018-03-14 |
| 21 | Como GHA quiero visualizar el estado de mis obligaciones a través de mis indicadores | baseline start none → 2018-03-12; baseline finish none → 2018-03-14 |
| 22 | Como GHA quiero ller el ingreso de la fecha de llegada de un vuelo por Web Aduana | baseline start none → 2018-02-12; baseline finish none → 2018-03-15 |
| 23 | Como GHA quiero capturar y registrar el ingreso de la fecha de llegada de un vuelo | baseline start none → 2018-03-12; baseline finish none → 2018-03-15 |
| 24 | Como GHA quiero leer el ingreso de la fecha del termino de descarga por Web Aduana | baseline start none → 2018-03-12; baseline finish none → 2018-03-16 |
| 25 | Como GHA quiero capturar y almacenar el "registro de la fecha de termino de descarga" | baseline start none → 2018-03-12; baseline finish none → 2018-03-16 |
| 26 | Como GHA quiero leer el ingreso del termino de embarque por Web Aduana | baseline start none → 2018-03-12; baseline finish none → 2018-03-19 |
| 27 | Como GHA quiero capturar y almacenar el "registro de término de embarque" | baseline start none → 2018-03-12; baseline finish none → 2018-03-19 |
| 28 | Como GHA quiero leer el ingreso de la fecha de autorización de la carga via Web Aduana | baseline start none → 2018-02-12; baseline finish none → 2018-03-20 |
| 29 | Como GHA quiero capturar y almacenar e "registro de autorización de la carga" | baseline start none → 2018-02-12; baseline finish none → 2018-03-28 |
| 30 | Transmisión de archivos a Aduanas por Teledespacho 1 | baseline start 2018-03-22 → 2018-03-23; baseline finish 2018-03-23 → 2018-03-28 |
| 31 | **Sprint 4** | baseline start 2018-03-26 → 2018-04-02; baseline finish 2018-04-10 → 2018-04-13 |
| 32 | Seguir y facilitar desarrollo del producto S4 | baseline start 2018-03-26 → 2018-04-02; baseline finish 2018-04-10 → 2018-04-13 |
| 33 | Transmisión de archivos a Aduanas por Teledespacho 2 | baseline start 2018-03-26 → 2018-04-02; baseline finish 2018-04-03 → 2018-04-13 |
| 34 | Visualizar el listado de mis vuelos | baseline start 2018-04-04 → 2018-04-02; baseline finish 2018-04-10 → 2018-04-02 |
| 35 | Visualizar el listado de mis obligaciones por vuelo | baseline start none → 2018-04-03; baseline finish none → 2018-04-03 |
| 36 | Visualizar el listado de mis guías por vuelo | baseline start none → 2018-04-04; baseline finish none → 2018-04-04 |
| 37 | Visualizar el listado de mis obligaciones por guía de un vuelo | baseline start none → 2018-04-05; baseline finish none → 2018-04-05 |
| 38 | Visualizar el avance de mis obligaciones por guía de un vuelo | baseline start none → 2018-04-06; baseline finish none → 2018-04-06 |
| 39 | Visualizar el estado de mis obligaciones de una guía a través de mis indicadores | baseline start none → 2018-04-09; baseline finish none → 2018-04-09 |
| 40 | Visualizar el avance de mis obligaciones por vuelo | baseline start none → 2018-04-10; baseline finish none → 2018-04-10 |
| 41 | Visualizar el estado de mis obligaciones por vuelo a través de mis indicadores | baseline start none → 2018-04-11; baseline finish none → 2018-04-11 |
| 42 | Asignar un responsable por vuelo | baseline start none → 2018-04-12; baseline finish none → 2018-04-12 |
| 43 | Re asignar un responsable por vuelo | baseline start none → 2018-04-12; baseline finish none → 2018-04-12 |
| 44 | Visualizar los errores de mis transmisiones por guía de un vuelo | baseline start none → 2018-04-13; baseline finish none → 2018-04-13 |
| 45 | Cerrar un grupo de procesos de una guía | baseline start none → 2018-04-13; baseline finish none → 2018-04-13 |
| 46 | **Sprint 5** | baseline start 2018-04-11 → 2018-04-16; baseline finish 2018-04-24 → 2018-04-27 |
| 47 | Seguir y facilitar desarrollo del producto S5 | baseline start 2018-04-11 → 2018-04-16; baseline finish 2018-04-24 → 2018-04-27 |
| 48 | Visualizar listado de guias y responsabilidades EXPO | baseline start 2018-04-11 → 2018-04-16; baseline finish 2018-04-12 → 2018-04-17 |
| 49 | Visualizar indicadores del tablero GHA | baseline start 2018-04-13 → 2018-04-18; baseline finish 2018-04-16 → 2018-04-19 |
| 50 | Visualizar indicadores del tablero IMPO | baseline start 2018-04-17 → 2018-04-20; baseline finish 2018-04-18 → 2018-04-23 |
| 51 | Visualizar indicadores del tablero EXPO | baseline start 2018-04-19 → 2018-04-24; baseline finish 2018-04-19 → 2018-04-24 |
| 52 | Modificar estado del vuelo | baseline start 2018-04-20 → 2018-04-25; baseline finish 2018-04-20 → 2018-04-25 |
| 53 | Modificar estado de las guias | baseline start 2018-04-23 → 2018-04-26; baseline finish 2018-04-23 → 2018-04-26 |
| 54 | Modificar estado de las responsabilidades | baseline start 2018-04-24 → 2018-04-27; baseline finish 2018-04-24 → 2018-04-27 |
| 55 | **Sprint 6** | baseline start 2018-04-25 → 2018-04-30; baseline finish 2018-05-08 → 2018-05-11 |
| 56 | Seguir y facilitar desarrollo del producto S6 | baseline start 2018-04-25 → 2018-04-30; baseline finish 2018-05-08 → 2018-05-11 |
| 57 | Afinar diseño del tablero | baseline start 2018-04-25 → 2018-04-30; baseline finish 2018-04-27 → 2018-05-02 |
| 58 | Ingresar y/o actualizar bd de tablas maestras | baseline start 2018-04-30 → 2018-05-03; baseline finish 2018-05-02 → 2018-05-07 |
| 59 | Realizar pruebas funcionales | baseline start 2018-05-03 → 2018-05-08; baseline finish 2018-05-08 → 2018-05-11 |

## Version 3 (saved 2018-04-11, file Proyecto Transmision - CronogramaV3_1004.mpp)

Last finish 2018-05-11 → 2018-05-28 (+17d). Complete tasks 23 → 27.

Added:

| ID | Task | Duration | Start | Finish | Predecessors | Resources |
| --- | --- | --- | --- | --- | --- | --- |
| 33 | Seguimiento y control de calidad del Tablero | 10d | 2018-04-09 A | 2018-04-20 |  | Jimy |
| 47 | Cierre de vuelo por dueño de vuelo | 1d | 2018-04-26 | 2018-04-26 | 46 | Ivan |
| 48 | Visualización de vuelos por grupo de aerolíneas | 0.5d | 2018-04-27 | 2018-04-27 | 47 | Ivan |
| 49 | Visualización de vuelos según llegada de vuelo | 0.5d | 2018-04-27 | 2018-04-27 | 48 | Ivan |

Removed: 53 Modificar estado de las guias; 54 Modificar estado de las responsabilidades

Changed:

| ID | Task | Start | Finish | Duration | Complete | Total float | Other |
| --- | --- | --- | --- | --- | --- | --- | --- |
| 1 | **Control Tablero Transmisiones** |  | 2018-05-11 → 2018-05-28 (+17d) | 63d → 74d | 50% → 53% |  |  |
| 13 | **Sprint 3** |  | 2018-03-28 A |  | 83% → 100% | 0d → none |  |
| 14 | Seguir y facilitar desarrollo del producto S3 |  | 2018-03-28 A |  | 77% → 100% | 0d → none |  |
| 29 | Como GHA quiero capturar y almacenar e "registro de autorización de la carga" |  | 2018-03-28 A |  | 50% → 100% | 0d → none |  |
| 30 | Transmisión de archivos a Aduanas por Teledespacho 1 |  | 2018-03-28 A |  | 70% → 100% | 0d → none |  |
| 31 | **Sprint 4** | 2018-04-02 → 2018-04-09 A (+7d) | 2018-04-13 → 2018-04-27 (+14d) | 10d → 15d | 0% → 6% |  | baseline start 2018-04-02 → 2018-04-09; baseline finish 2018-04-13 → 2018-04-27 |
| 32 | Seguir y facilitar desarrollo del producto S4 | 2018-04-02 → 2018-04-09 A (+7d) | 2018-04-13 → 2018-04-27 (+14d) | 10d → 15d | 0% → 7% |  |  |
| 34 | Transmisión de archivos a Aduanas por Teledespacho 2 | 2018-04-02 → 2018-04-09 A (+7d) | 2018-04-13 → 2018-04-20 (+7d) |  |  | 0d → 5d | baseline start 2018-04-02 → 2018-04-09; baseline finish 2018-04-13 → 2018-04-20 |
| 35 | Acceder Tablero y Visualizar el listado de mis vuelos | 2018-04-02 → 2018-04-09 A (+7d) | 2018-04-02 → 2018-04-09 A (+7d) |  | 0% → 100% | 0d → none | was named Visualizar el listado de mis vuelos |
| 36 | Visualizar el listado de mis obligaciones por vuelo | 2018-04-03 → 2018-04-10 A (+7d) | 2018-04-03 → 2018-04-10 (+7d) |  | 0% → 70% |  |  |
| 37 | Visualizar el listado de mis guías por vuelo | 2018-04-04 → 2018-04-11 (+7d) | 2018-04-04 → 2018-04-11 (+7d) | 1d → 0.5d |  |  |  |
| 38 | Visualizar el listado de mis obligaciones por guía de un vuelo | 2018-04-05 → 2018-04-11 (+6d) | 2018-04-05 → 2018-04-13 (+8d) | 1d → 2d |  |  |  |
| 39 | Visualizar el avance de mis obligaciones por guía de un vuelo | 2018-04-06 → 2018-04-13 (+7d) | 2018-04-06 → 2018-04-17 (+11d) | 1d → 2d |  |  |  |
| 40 | Visualizar el estado de mis obligaciones de una guía a través de mis indicadores | 2018-04-09 → 2018-04-17 (+8d) | 2018-04-09 → 2018-04-18 (+9d) |  |  |  |  |
| 41 | Visualizar el avance de mis obligaciones por vuelo | 2018-04-10 → 2018-04-18 (+8d) | 2018-04-10 → 2018-04-18 (+8d) | 1d → 0.5d |  |  |  |
| 42 | Visualizar el estado de mis obligaciones por vuelo a través de mis indicadores | 2018-04-11 → 2018-04-19 (+8d) | 2018-04-11 → 2018-04-19 (+8d) | 1d → 0.5d |  |  |  |
| 43 | Asignar un responsable por vuelo | 2018-04-12 → 2018-04-19 (+7d) | 2018-04-12 → 2018-04-20 (+8d) | 0.5d → 1d |  |  |  |
| 44 | Re asignar un responsable por vuelo | 2018-04-12 → 2018-04-20 (+8d) | 2018-04-12 → 2018-04-23 (+11d) | 0.5d → 1d |  |  |  |
| 45 | Visualizar los errores de mis transmisiones por guía de un vuelo | 2018-04-13 → 2018-04-23 (+10d) | 2018-04-13 → 2018-04-25 (+12d) | 0.5d → 2d |  |  |  |
| 46 | Cerrar un grupo de procesos de una guía | 2018-04-13 → 2018-04-25 (+12d) | 2018-04-13 → 2018-04-25 (+12d) |  |  |  | baseline start 2018-04-13 → none; baseline finish 2018-04-13 → none |
| 50 | **Sprint 5** | 2018-04-16 → 2018-04-30 (+14d) | 2018-04-27 → 2018-05-14 (+17d) | 10d → 11d |  |  | baseline start 2018-04-16 → 2018-04-30; baseline finish 2018-04-27 → 2018-05-08 |
| 51 | Seguir y facilitar desarrollo del producto S5 | 2018-04-16 → 2018-04-30 (+14d) | 2018-04-27 → 2018-05-07 (+10d) | 10d → 6d |  | 0d → 5d |  |
| 52 | Visualizar listado de guias y responsabilidades EXPO | 2018-04-16 → 2018-04-30 (+14d) | 2018-04-17 → 2018-05-01 (+14d) |  |  |  |  |
| 53 | Visualizar indicadores del tablero Expo | 2018-04-18 → 2018-05-02 (+14d) | 2018-04-19 → 2018-05-02 (+13d) | 2d → 1d |  |  | was named Visualizar indicadores del tablero GHA |
| 54 | Visualizar Avance del Tablero Expo | 2018-04-20 → 2018-05-03 (+13d) | 2018-04-23 → 2018-05-03 (+10d) | 2d → 1d |  |  | was named Visualizar indicadores del tablero IMPO |
| 55 | Visualizar indicadores del tablero Expo | 2018-04-24 → 2018-05-04 (+10d) | 2018-04-24 → 2018-05-04 (+10d) |  |  |  | was named Visualizar indicadores del tablero EXPO |
| 56 | Seguimiento y control de calidad del Tablero | 2018-04-25 → 2018-05-07 (+12d) | 2018-04-25 → 2018-05-14 (+19d) | 1d → 6d |  |  | was named Modificar estado del vuelo |
| 57 | **Sprint 6** | 2018-04-30 → 2018-05-08 (+8d) | 2018-05-11 → 2018-05-28 (+17d) | 10d → 15d |  |  | baseline start 2018-04-30 → 2018-05-09; baseline finish 2018-05-11 → 2018-05-18 |
| 58 | Preparar cierre del proyecto | 2018-04-30 → 2018-05-08 (+8d) | 2018-05-11 → 2018-05-14 (+3d) | 10d → 5d |  | 0d → 10d | was named Seguir y facilitar desarrollo del producto S6 |
| 59 | Afinar diseño/funcionalidad del tablero | 2018-04-30 → 2018-05-15 (+15d) | 2018-05-02 → 2018-05-17 (+15d) |  |  |  | was named Afinar diseño del tablero; resources Ivan; Miguel → Ivan |
| 60 | Ingresar y/o actualizar bd de tablas maestras | 2018-05-03 → 2018-05-18 (+15d) | 2018-05-07 → 2018-05-21 (+14d) | 3d → 2d |  |  | resources Ivan; Miguel → Ivan |
| 61 | Seguimiento y control de calidad del Tablero | 2018-05-08 → 2018-05-22 (+14d) | 2018-05-11 → 2018-05-28 (+17d) | 4d → 5d |  |  | was named Realizar pruebas funcionales; resources Ivan; Miguel → Jimmy |

## Version 4 (saved 2018-04-17, file Plan Trasmsion - Original 1704 yery.mpp)

Last finish 2018-05-28 → 2018-05-15 (-13d). Complete tasks 27 → 6.

Added:

| ID | Task | Duration | Start | Finish | Predecessors | Constraint | Resources |
| --- | --- | --- | --- | --- | --- | --- | --- |
| 2 | **Sprint 0 - Analisis** | 28d | 2018-01-03 | 2018-02-09 |  |  |  |
| 3 | Definición de la Arquitectura | 4d | 2018-01-03 | 2018-01-08 |  | start no earlier than 2018-01-03 | Yagreda |
| 4 | Análisis | 24d | 2018-01-09 | 2018-02-09 | 3 |  | Yagreda |
| 34 | Pruebas Unitarias Tablero Gestion GHA | 3d | 2018-03-16 | 2018-03-20 | 23 |  | Itasso |
| 35 | Pruebas Funcionales Tablero Gestion GHA | 6d | 2018-03-21 | 2018-03-28 | 34 |  | Jsanchez |
| 39 | Acceso de archivos a Aduanas por Teledespacho 2 | 5d | 2018-04-09 A | 2018-04-13 A | 38 |  | Lpeña |
| 40 | Generar Visor de Tranmisiones Teledespacho Transportista | 4d | 2018-04-16 | 2018-04-19 | 39 |  | Lpeña |
| 41 | Generar Visor de Tranmisiones Teledespacho Terminal | 3d | 2018-04-20 | 2018-04-24 | 40 |  | Lpeña |
| 42 | Generar Visor de Tranmisiones Teledespacho Agente | 3d | 2018-04-25 | 2018-04-27 | 41 |  | Lpeña |
| 58 | Pruebas Unitarias Tablero Gestion IMPO | 1d | 2018-04-23 | 2018-04-23 | 57 |  | Itasso |
| 59 | Pruebas Funcionales Tablero Gestion IMPO | 4d | 2018-04-24 | 2018-04-27 | 58 |  | Jsanchez |
| 63 | Generar archivos de Transmision Agente | 3d | 2018-04-30 | 2018-05-02 | 42 |  | Lpeña |
| 64 | Generar Visor de Tranmisiones Teledespacho Agente | 3d | 2018-05-03 | 2018-05-07 | 63 |  | Lpeña |
| 65 | Modificacion del Visor de Transmisiones del Sitradi | 2d | 2018-05-08 | 2018-05-09 | 64 |  | Lpeña |
| 69 | Pruebas Unitarias Tablero Gestion EXPO | 1d | 2018-05-07 | 2018-05-07 | 68 |  | Itasso |
| 70 | Pruebas Funcionales Tablero Gestion EXPO | 2d | 2018-05-08 | 2018-05-09 | 69 |  | Jsanchez |
| 74 | Ingresar y/o actualizar BD de tablas maestras | 1d | 2018-05-11 | 2018-05-11 | 73 |  | Itasso |
| 75 | Pase a Produccion Tablero (GHA, IMPO, EXPO) | 1d | 2018-05-14 | 2018-05-14 | 74 |  | Yagreda |

Removed: 56 Seguimiento y control de calidad del Tablero; 60 Ingresar y/o actualizar bd de tablas maestras; 61 Seguimiento y control de calidad del Tablero

Changed:

| ID | Task | Start | Finish | Duration | Complete | Total float | Predecessors | Other |
| --- | --- | --- | --- | --- | --- | --- | --- | --- |
| 1 | **Control Tablero Transmisiones** | 2018-02-12 A → 2018-01-03 A (-40d) | 2018-05-28 → 2018-05-15 (-13d) | 74d → 93d | 53% → 7% |  |  | baseline start 2018-02-12 → none; baseline finish 2018-05-11 → none |
| 5 | **Sprint 1 - Preparación** | 2018-02-12 A → 2018-02-12 | 2018-02-20 A → 2018-02-20 |  | 100% → 0% | none → 5d |  | was named Sprint 1; baseline start 2018-02-12 → none; baseline finish 2018-02-20 → none |
| 6 | Seguir y facilitar desarrollo del producto S1 | 2018-02-12 A → 2018-02-12 | 2018-02-20 A → 2018-02-20 |  | 100% → 0% | none → 58d | none → 4 | resources Yery → Yagreda; baseline start 2018-02-12 → none; baseline finish 2018-02-20 → none |
| 7 | Fuentes consolidadas | 2018-02-12 A → 2018-02-12 | 2018-02-13 A → 2018-02-13 |  | 100% → 0% | none → 2d | none → 4 | resources Ivan → Itasso; baseline start 2018-02-12 → none; baseline finish 2018-02-13 → none |
| 8 | Control de acceso a usuarios | 2018-02-14 A → 2018-02-14 | 2018-02-15 A → 2018-02-15 |  | 100% → 0% | none → 2d |  | resources Ivan → Itasso; baseline start 2018-02-14 → none; baseline finish 2018-02-15 → none |
| 9 | Servicio web de acceso a datos | 2018-02-16 A → 2018-02-16 | 2018-02-19 A → 2018-02-19 |  | 100% → 0% | none → 2d |  | resources Ivan → Itasso; baseline start 2018-02-16 → none; baseline finish 2018-02-19 → none |
| 10 | Estructurar tablero de control de transmisiones | 2018-02-20 A → 2018-02-20 | 2018-02-20 A → 2018-02-20 |  | 100% → 0% | none → 2d |  | resources Ivan → Itasso; baseline start 2018-02-20 → none; baseline finish 2018-02-20 → none |
| 11 | **Sprint 2 - Tablero GHA** | 2018-02-21 A → 2018-02-21 | 2018-03-09 A → 2018-03-09 |  | 100% → 0% | none → 5d |  | was named Sprint 2; baseline start 2018-02-21 → none; baseline finish 2018-03-09 → none |
| 12 | Seguir y facilitar desarrollo del producto S2 | 2018-02-21 A → 2018-02-21 | 2018-03-09 A → 2018-03-09 |  | 100% → 0% | none → 45d |  | resources Yery → Yagreda; baseline start 2018-02-21 → none; baseline finish 2018-03-09 → none |
| 13 | Visualizar vuelos en el tablero GHA | 2018-02-21 A → 2018-02-21 | 2018-02-27 A → 2018-02-27 |  | 100% → 0% | none → 2d |  | resources Ivan → Itasso; baseline start 2018-02-21 → none; baseline finish 2018-02-27 → none |
| 14 | Registrar datos manifiesto de ingreso | 2018-02-28 A → 2018-02-28 | 2018-03-06 A → 2018-03-06 |  | 100% → 0% | none → 2d |  | resources Ivan → Itasso; baseline start 2018-02-28 → none; baseline finish 2018-03-06 → none |
| 15 | Registrar datos manifiesto de salida | 2018-03-07 A → 2018-03-07 | 2018-03-09 A → 2018-03-09 |  | 100% → 0% | none → 2d | 14, 20 → 14 | resources Ivan → Itasso; baseline start 2018-03-07 → none; baseline finish 2018-03-09 → none |
| 16 | **Sprint 3 - Tablero GHA** | 2018-02-12 A → 2018-03-12 (+28d) | 2018-03-28 A → 2018-03-28 | 33d → 13d | 100% → 0% | none → 5d |  | was named Sprint 3; baseline start 2018-02-12 → none; baseline finish 2018-03-28 → none |
| 17 | Seguir y facilitar desarrollo del producto S3 | 2018-03-12 A → 2018-03-12 | 2018-03-28 A → 2018-03-28 |  | 100% → 0% | none → 3d |  | resources Yery → Yagreda; baseline start 2018-03-12 → none; baseline finish 2018-03-28 → none |
| 18 | Leer buzon correos documentos vinculados | 2018-03-12 A → 2018-03-12 | 2018-03-15 A → 2018-03-15 |  | 100% → 0% | none → 6d |  | resources Yery → Yagreda; baseline start 2018-03-12 → none; baseline finish 2018-03-15 → none |
| 19 | Actualizar proceso documentos vinculados | 2018-03-16 A → 2018-03-16 | 2018-03-22 A → 2018-03-22 |  | 100% → 0% | none → 4d |  | resources Yery → Yagreda; baseline start 2018-03-16 → none; baseline finish 2018-03-22 → none |
| 20 | Formulario de control de acceso de usuario al tablero | 2018-03-12 A → 2018-03-12 | 2018-03-12 A → 2018-03-12 |  | 100% → 0% | none → 2d | none → 15 | resources Ivan → Itasso; baseline start 2018-03-12 → none; baseline finish 2018-03-12 → none |
| 21 | Como GHA quiero visualizar el listado de mis vuelos | 2018-03-12 A → 2018-03-13 (+1d) | 2018-03-13 A → 2018-03-13 |  | 100% → 0% | none → 2d |  | resources Ivan → Itasso; baseline start 2018-03-12 → none; baseline finish 2018-03-13 → none |
| 22 | Como GHA quiero visualizar mis obligaciones | 2018-03-12 A → 2018-03-14 (+2d) | 2018-03-13 A → 2018-03-14 (+1d) |  | 100% → 0% | none → 2d |  | resources Ivan → Itasso; baseline start 2018-03-12 → none; baseline finish 2018-03-13 → none |
| 23 | Como GHA quiero visualizar el avance de mis obligaciones | 2018-03-12 A → 2018-03-15 (+3d) | 2018-03-14 A → 2018-03-15 (+1d) |  | 100% → 0% | none → 2d |  | resources Ivan → Itasso; baseline start 2018-03-12 → none; baseline finish 2018-03-14 → none |
| 24 | Como GHA quiero visualizar el estado de mis obligaciones a través de mis indicadores | 2018-03-12 A → 2018-03-16 (+4d) | 2018-03-14 A → 2018-03-16 (+2d) |  | 100% → 0% | none → 2d |  | resources Ivan → Lpeña; baseline start 2018-03-12 → none; baseline finish 2018-03-14 → none |
| 25 | Como GHA quiero ller el ingreso de la fecha de llegada de un vuelo por Web Aduana | 2018-02-12 A → 2018-03-19 (+35d) | 2018-03-15 A → 2018-03-19 (+4d) |  | 100% → 0% | none → 2d |  | resources Ivan → Lpeña; baseline start 2018-02-12 → none; baseline finish 2018-03-15 → none |
| 26 | Como GHA quiero capturar y registrar el ingreso de la fecha de llegada de un vuelo | 2018-03-12 A → 2018-03-20 (+8d) | 2018-03-15 A → 2018-03-20 (+5d) |  | 100% → 0% | none → 2d |  | resources Ivan → Lpeña; baseline start 2018-03-12 → none; baseline finish 2018-03-15 → none |
| 27 | Como GHA quiero leer el ingreso de la fecha del termino de descarga por Web Aduana | 2018-03-12 A → 2018-03-21 (+9d) | 2018-03-16 A → 2018-03-21 (+5d) |  | 100% → 0% | none → 2d |  | resources Ivan → Itasso; baseline start 2018-03-12 → none; baseline finish 2018-03-16 → none |
| 28 | Como GHA quiero capturar y almacenar el "registro de la fecha de termino de descarga" | 2018-03-12 A → 2018-03-22 (+10d) | 2018-03-16 A → 2018-03-22 (+6d) |  | 100% → 0% | none → 2d |  | resources Ivan → Itasso; baseline start 2018-03-12 → none; baseline finish 2018-03-16 → none |
| 29 | Como GHA quiero leer el ingreso del termino de embarque por Web Aduana | 2018-03-12 A → 2018-03-23 (+11d) | 2018-03-19 A → 2018-03-23 (+4d) |  | 100% → 0% | none → 2d |  | resources Ivan → Itasso; baseline start 2018-03-12 → none; baseline finish 2018-03-19 → none |
| 30 | Como GHA quiero capturar y almacenar el "registro de término de embarque" | 2018-03-12 A → 2018-03-26 (+14d) | 2018-03-19 A → 2018-03-26 (+7d) |  | 100% → 0% | none → 2d |  | resources Ivan → Itasso; baseline start 2018-03-12 → none; baseline finish 2018-03-19 → none |
| 31 | Como GHA quiero leer el ingreso de la fecha de autorización de la carga via Web Aduana | 2018-02-12 A → 2018-03-27 (+43d) | 2018-03-20 A → 2018-03-27 (+7d) |  | 100% → 0% | none → 1d |  | resources Ivan → Itasso; baseline start 2018-02-12 → none; baseline finish 2018-03-20 → none |
| 32 | Como GHA quiero capturar y almacenar e "registro de autorización de la carga" | 2018-02-12 A → 2018-03-28 (+44d) | 2018-03-28 A → 2018-03-28 | 7d → 1d | 100% → 0% | none → 32d |  | resources Ivan → Itasso; baseline start 2018-02-12 → none; baseline finish 2018-03-28 → none |
| 33 | Transmisión de archivos a Aduanas por Teledespacho 1 | 2018-03-23 A → 2018-03-23 | 2018-03-28 A → 2018-03-28 |  | 100% → 0% | none → 4d |  | resources Luis → Lpeña; baseline start 2018-03-23 → none; baseline finish 2018-03-28 → none |
| 36 | **Sprint 4 - Tablero IMPO** | 2018-04-09 A → 2018-04-02 A (-7d) |  | 15d → 20d | 6% → 23% | 0d → 4d |  | was named Sprint 4; baseline start 2018-04-09 → none; baseline finish 2018-04-27 → none |
| 37 | Seguir y facilitar desarrollo del producto S4 | 2018-04-09 A → 2018-04-02 (-7d) |  | 15d → 20d | 7% → 0% | 0d → 3d |  | constraint none → start no earlier than 2018-04-02; resources Yery → Yagreda; baseline start 2018-04-02 → none; baseline finish 2018-04-13 → none |
| 38 | Transmisión de archivos a Aduanas por Teledespacho 2 | 2018-04-09 A → 2018-04-02 A (-7d) | 2018-04-20 → 2018-04-06 A (-14d) | 10d → 5d | 0% → 100% | 5d → none |  | constraint none → start no earlier than 2018-04-02; resources Luis → Lpeña; baseline start 2018-04-09 → none; baseline finish 2018-04-20 → none |
| 43 | Acceder Tablero y Visualizar el listado de mis vuelos | 2018-04-09 A → 2018-04-02 A (-7d) | 2018-04-09 A → 2018-04-02 A (-7d) |  |  |  |  | constraint none → start no earlier than 2018-04-02; resources Ivan → Itasso; baseline start 2018-04-02 → none; baseline finish 2018-04-02 → none |
| 44 | Visualizar el listado de mis obligaciones por vuelo | 2018-04-10 A → 2018-04-03 A (-7d) | 2018-04-10 → 2018-04-03 A (-7d) |  | 70% → 100% | 0d → none |  | resources Ivan → Itasso; baseline start 2018-04-03 → none; baseline finish 2018-04-03 → none |
| 45 | Visualizar el listado de mis guías por vuelo | 2018-04-11 → 2018-04-04 A (-7d) | 2018-04-11 → 2018-04-04 A (-7d) | 0.5d → 1d | 0% → 100% | 0d → none |  | resources Ivan → Itasso; baseline start 2018-04-04 → none; baseline finish 2018-04-04 → none |
| 46 | Visualizar el listado de mis obligaciones por guía de un vuelo | 2018-04-11 → 2018-04-05 A (-6d) | 2018-04-13 → 2018-04-05 A (-8d) | 2d → 1d | 0% → 100% | 0d → none |  | resources Ivan → Itasso; baseline start 2018-04-05 → none; baseline finish 2018-04-05 → none |
| 47 | Visualizar el avance de mis obligaciones por guía de un vuelo | 2018-04-13 → 2018-04-06 (-7d) | 2018-04-17 → 2018-04-06 (-11d) | 2d → 1d |  |  |  | resources Ivan → Itasso; baseline start 2018-04-06 → none; baseline finish 2018-04-06 → none |
| 48 | Visualizar el estado de mis obligaciones de una guía a través de mis indicadores | 2018-04-17 → 2018-04-09 (-8d) | 2018-04-18 → 2018-04-09 (-9d) |  |  |  |  | resources Ivan → Itasso; baseline start 2018-04-09 → none; baseline finish 2018-04-09 → none |
| 49 | Visualizar el avance de mis obligaciones por vuelo | 2018-04-18 → 2018-04-10 (-8d) | 2018-04-18 → 2018-04-10 (-8d) | 0.5d → 1d |  |  |  | resources Ivan → Itasso; baseline start 2018-04-10 → none; baseline finish 2018-04-10 → none |
| 50 | Visualizar el estado de mis obligaciones por vuelo a través de mis indicadores | 2018-04-19 → 2018-04-11 (-8d) | 2018-04-19 → 2018-04-11 (-8d) | 0.5d → 1d |  |  |  | resources Ivan → Itasso; baseline start 2018-04-11 → none; baseline finish 2018-04-11 → none |
| 51 | Asignar un responsable por vuelo | 2018-04-19 → 2018-04-12 (-7d) | 2018-04-20 → 2018-04-12 (-8d) |  |  |  |  | resources Ivan → Itasso; baseline start 2018-04-12 → none; baseline finish 2018-04-12 → none |
| 52 | Re asignar un responsable por vuelo | 2018-04-20 → 2018-04-13 (-7d) | 2018-04-23 → 2018-04-13 (-10d) |  |  |  |  | resources Ivan → Itasso; baseline start 2018-04-12 → none; baseline finish 2018-04-12 → none |
| 53 | Visualizar los errores de mis transmisiones por guía de un vuelo | 2018-04-23 → 2018-04-16 (-7d) | 2018-04-25 → 2018-04-16 (-9d) | 2d → 1d |  |  |  | resources Ivan → Itasso; baseline start 2018-04-13 → none; baseline finish 2018-04-13 → none |
| 54 | Cerrar un grupo de procesos de una guía | 2018-04-25 → 2018-04-17 (-8d) | 2018-04-25 → 2018-04-17 (-8d) | 0.5d → 1d |  |  |  | resources Ivan → Itasso |
| 55 | Cierre de vuelo por dueño de vuelo | 2018-04-26 → 2018-04-18 (-8d) | 2018-04-26 → 2018-04-18 (-8d) |  |  |  |  | resources Ivan → Itasso |
| 56 | Visualización de vuelos por grupo de aerolíneas | 2018-04-27 → 2018-04-19 (-8d) | 2018-04-27 → 2018-04-19 (-8d) | 0.5d → 1d |  |  |  | resources Ivan → Itasso |
| 57 | Visualización de vuelos según llegada de vuelo | 2018-04-27 → 2018-04-20 (-7d) | 2018-04-27 → 2018-04-20 (-7d) | 0.5d → 1d |  |  |  | resources Ivan → Itasso |
| 60 | **Sprint 5 - Tablero EXPO** |  | 2018-05-14 → 2018-05-09 (-5d) | 11d → 8d |  |  |  | was named Sprint 5; baseline start 2018-04-30 → none; baseline finish 2018-05-08 → none |
| 61 | Seguir y facilitar desarrollo del producto S5 |  |  |  |  | 5d → 3d |  | resources Yery → Yagreda; baseline start 2018-04-16 → none; baseline finish 2018-04-27 → none |
| 62 | Visualizar listado de guias y responsabilidades EXPO |  |  |  |  |  | 36 → 59 | resources Ivan → Itasso; baseline start 2018-04-16 → none; baseline finish 2018-04-17 → none |
| 66 | Visualizar indicadores del tablero Expo |  |  |  |  |  |  | resources Ivan → Itasso; baseline start 2018-04-18 → none; baseline finish 2018-04-19 → none |
| 67 | Visualizar Avance del Tablero Expo |  |  |  |  |  |  | resources Ivan → Itasso; baseline start 2018-04-20 → none; baseline finish 2018-04-23 → none |
| 68 | Visualizar indicadores del tablero Expo |  |  |  |  |  |  | resources Ivan → Itasso; baseline start 2018-04-24 → none; baseline finish 2018-04-24 → none |
| 71 | **Sprint 6 - Pase a PRD** |  | 2018-05-28 → 2018-05-15 (-13d) | 15d → 6d |  |  |  | was named Sprint 6; baseline start 2018-05-09 → none; baseline finish 2018-05-18 → none |
| 72 | Preparar cierre del proyecto |  | 2018-05-14 → 2018-05-10 (-4d) | 5d → 3d |  | 10d → 3d |  | resources Yery → Yagreda; baseline start 2018-04-30 → none; baseline finish 2018-05-11 → none |
| 73 | Afinar diseño/funcionalidad del tablero | 2018-05-15 → 2018-05-08 (-7d) | 2018-05-17 → 2018-05-10 (-7d) |  |  |  | 60 → 69 | resources Ivan → Itasso; baseline start 2018-04-30 → none; baseline finish 2018-05-02 → none |
| 76 | Seguimiento y control de calidad del Tablero | 2018-04-09 A → 2018-05-15 (+36d) | 2018-04-20 → 2018-05-15 (+25d) | 10d → 1d | 5% → 0% | 5d → 0d | none → 75 | resources Jimy → Jsanchez; baseline start 2018-04-12 → none; baseline finish 2018-04-26 → none |
