# Cronograma2_2

How a schedule from MS Project changed from version to version. A marks actual dates.

## Version 1 (saved 2018-03-06, file Cronograma2Rec.mpp)

| ID | WBS | Task | Duration | Start | Finish | Total float |
| --- | --- | --- | --- | --- | --- | --- |
| 1 | 1 | **Control Tablero Transmisiones** | 70d | 2018-02-21 | 2018-05-29 | 0d |
| 2 | 1.1 | **Sprint 1** | 10d | 2018-03-07 | 2018-03-20 |  |
| 3 |  | Seguimiento del py | 1d | 2018-03-07 | 2018-03-07 |  |
| 4 |  | Fuentes consolidadas | 1d | 2018-03-07 | 2018-03-07 |  |
| 5 |  | Control de acceso a usuarios | 1d | 2018-03-07 | 2018-03-07 |  |
| 6 |  | Servicio web de acceso a datos | 1d | 2018-03-07 | 2018-03-07 |  |
| 7 |  | Estructurar tablero de control de transmisiones | 1d | 2018-03-07 | 2018-03-07 |  |
| 8 | 1.2 | **Sprint 2** | 16d | 2018-02-21 | 2018-03-14 |  |
| 9 |  | Seguir y facilitar desarrollo del producto | 1d | 2018-02-21 | 2018-02-21 |  |
| 10 |  | Visualizar vuelos en el tablero GHA | 1d | 2018-02-21 | 2018-02-21 |  |
| 11 |  | Registrar datos manifiesto de ingreso | 1d | 2018-02-21 | 2018-02-21 |  |
| 12 |  | Registrar datos manifiesto de salida | 1d | 2018-02-21 | 2018-02-21 |  |
| 13 | 1.3 | **Sprint 3** | 15d | 2018-03-15 | 2018-04-04 |  |
| 14 |  | Seguir y facilitar desarrollo del producto | 1d | 2018-03-15 | 2018-03-15 |  |
| 15 |  | Leer buzon correos documentos vinculados | 1d | 2018-03-15 | 2018-03-15 |  |
| 16 |  | Actualizar proceso documentos vinculados | 1d | 2018-03-15 | 2018-03-15 |  |
| 17 |  | Transmitir vía webservice 1 | 1d | 2018-03-15 | 2018-03-15 |  |
| 18 | 1.4 | **Sprint 4** | 13d | 2018-04-05 | 2018-04-23 |  |
| 19 |  | Seguir y facilitar desarrollo del producto | 1d | 2018-04-05 | 2018-04-05 |  |
| 20 |  | Visualizar listado de guias y responsabilidades IMPO | 1d | 2018-04-05 | 2018-04-05 |  |
| 21 |  | Transmitir vía webservice 2 | 1d | 2018-04-05 | 2018-04-05 |  |
| 22 | 1.5 | **Sprint 5** | 14d | 2018-04-24 | 2018-05-11 |  |
| 23 |  | Seguir y facilitar desarrollo del producto | 1d | 2018-04-24 | 2018-04-24 |  |
| 24 |  | Visualizar listado de guias y responsabilidades EXPO | 1d | 2018-04-24 | 2018-04-24 |  |
| 25 |  | Visualizar indicadores del tablero GHA | 1d | 2018-04-24 | 2018-04-24 |  |
| 26 |  | Visualizar indicadores del tablero IMPO | 1d | 2018-04-24 | 2018-04-24 |  |
| 27 |  | Visualizar indicadores del tablero EXPO | 1d | 2018-04-24 | 2018-04-24 |  |
| 28 |  | Modificar estado del vuelo | 1d | 2018-04-24 | 2018-04-24 |  |
| 29 |  | Modificar estado de las guias | 1d | 2018-04-24 | 2018-04-24 |  |
| 30 |  | Modificar estado de las responsabilidades | 1d | 2018-04-24 | 2018-04-24 |  |
| 31 | 1.6 | **Sprint 6** | 13d | 2018-05-11 | 2018-05-29 |  |
| 32 |  | Seguir y facilitar desarrollo del producto | 1d | 2018-05-11 | 2018-05-11 |  |
| 33 |  | Afinar diseño del tablero | 1d | 2018-05-11 | 2018-05-11 |  |
| 34 |  | Ingresar y/o actualizar bd de tablas maestras | 1d | 2018-05-11 | 2018-05-11 |  |
| 35 |  | Realizar pruebas funcionales | 1d | 2018-05-11 | 2018-05-11 |  |

## Version 2 (saved 2018-03-07, file Cronograma2Recursos.mpp)

Last finish stays 2018-05-29.

Changed:

| ID | Task | Start | Finish | Duration | Predecessors | Other |
| --- | --- | --- | --- | --- | --- | --- |
| 1 | **Control Tablero Transmisiones** | 2018-02-21 → 2018-02-07 (-14d) |  | 70d → 80d |  |  |
| 3 | Seguir y facilitar desarrollo del producto | 2018-03-07 → 2018-02-07 (-28d) | 2018-03-07 → 2018-02-20 (-15d) | 1d → 10d |  | was named Seguimiento del py |
| 4 | Fuentes consolidadas |  | 2018-03-07 → 2018-03-08 (+1d) | 1d → 2d |  |  |
| 5 | Control de acceso a usuarios | 2018-03-07 → 2018-03-09 (+2d) | 2018-03-07 → 2018-03-12 (+5d) | 1d → 2d | none → 4 |  |
| 6 | Servicio web de acceso a datos | 2018-03-07 → 2018-03-13 (+6d) | 2018-03-07 → 2018-03-14 (+7d) | 1d → 2d | none → 5 |  |
| 7 | Estructurar tablero de control de transmisiones | 2018-03-07 → 2018-03-15 (+8d) | 2018-03-07 → 2018-03-20 (+13d) | 1d → 4d | none → 6 |  |
| 9 | Seguir y facilitar desarrollo del producto |  | 2018-02-21 → 2018-03-14 (+21d) | 1d → 16d |  |  |
| 10 | Visualizar vuelos en el tablero GHA |  | 2018-02-21 → 2018-02-27 (+6d) | 1d → 5d |  |  |
| 11 | Registrar datos manifiesto de ingreso | 2018-02-21 → 2018-02-28 (+7d) | 2018-02-21 → 2018-03-07 (+14d) | 1d → 6d | none → 10 |  |
| 12 | Registrar datos manifiesto de salida | 2018-02-21 → 2018-03-08 (+15d) | 2018-02-21 → 2018-03-14 (+21d) | 1d → 5d | none → 11 |  |
| 14 | Seguir y facilitar desarrollo del producto |  | 2018-03-15 → 2018-04-04 (+20d) | 1d → 15d |  |  |
| 15 | Leer buzon correos documentos vinculados |  | 2018-03-15 → 2018-03-21 (+6d) | 1d → 5d |  |  |
| 16 | Actualizar proceso documentos vinculados | 2018-03-15 → 2018-03-22 (+7d) | 2018-03-15 → 2018-03-28 (+13d) | 1d → 5d | none → 15 |  |
| 17 | Transmitir vía webservice 1 | 2018-03-15 → 2018-03-29 (+14d) | 2018-03-15 → 2018-04-04 (+20d) | 1d → 5d | none → 16 |  |
| 19 | Seguir y facilitar desarrollo del producto |  | 2018-04-05 → 2018-04-23 (+18d) | 1d → 13d |  |  |
| 20 | Visualizar listado de guias y responsabilidades IMPO |  | 2018-04-05 → 2018-04-16 (+11d) | 1d → 8d |  |  |
| 21 | Transmitir vía webservice 2 | 2018-04-05 → 2018-04-17 (+12d) | 2018-04-05 → 2018-04-23 (+18d) | 1d → 5d | none → 20 |  |
| 23 | Seguir y facilitar desarrollo del producto |  | 2018-04-24 → 2018-05-11 (+17d) | 1d → 14d |  |  |
| 24 | Visualizar listado de guias y responsabilidades EXPO |  | 2018-04-24 → 2018-04-26 (+2d) | 1d → 3d |  |  |
| 25 | Visualizar indicadores del tablero GHA | 2018-04-24 → 2018-04-27 (+3d) | 2018-04-24 → 2018-04-30 (+6d) | 1d → 2d | none → 24 |  |
| 26 | Visualizar indicadores del tablero IMPO | 2018-04-24 → 2018-05-01 (+7d) | 2018-04-24 → 2018-05-02 (+8d) | 1d → 2d | none → 25 |  |
| 27 | Visualizar indicadores del tablero EXPO | 2018-04-24 → 2018-05-03 (+9d) | 2018-04-24 → 2018-05-04 (+10d) | 1d → 2d | none → 26 |  |
| 28 | Modificar estado del vuelo | 2018-04-24 → 2018-05-07 (+13d) | 2018-04-24 → 2018-05-08 (+14d) | 1d → 2d | none → 27 |  |
| 29 | Modificar estado de las guias | 2018-04-24 → 2018-05-09 (+15d) | 2018-04-24 → 2018-05-10 (+16d) | 1d → 2d | none → 28 |  |
| 30 | Modificar estado de las responsabilidades | 2018-04-24 → 2018-05-11 (+17d) | 2018-04-24 → 2018-05-11 (+17d) |  | none → 29 |  |
| 32 | Seguir y facilitar desarrollo del producto |  | 2018-05-11 → 2018-05-29 (+18d) | 1d → 13d |  |  |
| 33 | Afinar diseño del tablero |  | 2018-05-11 → 2018-05-17 (+6d) | 1d → 5d |  |  |
| 34 | Ingresar y/o actualizar bd de tablas maestras | 2018-05-11 → 2018-05-18 (+7d) | 2018-05-11 → 2018-05-24 (+13d) | 1d → 5d | none → 33 |  |
| 35 | Realizar pruebas funcionales | 2018-05-11 → 2018-05-25 (+14d) | 2018-05-11 → 2018-05-29 (+18d) | 1d → 3d | none → 34 |  |

## Version 3 (saved 2018-03-07, file CronogramaTransmisiones.mpp)

Last finish 2018-05-29 → 2018-05-08 (-21d).

Changed:

| ID | Task | Start | Finish | Duration | Total float | Predecessors | Other |
| --- | --- | --- | --- | --- | --- | --- | --- |
| 1 | **Control Tablero Transmisiones** | 2018-02-07 → 2018-02-12 (+5d) | 2018-05-29 → 2018-05-08 (-21d) | 80d → 60d |  |  |  |
| 2 | **Sprint 1** | 2018-03-07 → 2018-02-12 (-23d) | 2018-03-20 → 2018-02-20 (-28d) | 10d → 7d | none → 0d |  |  |
| 3 | Seguir y facilitar desarrollo del producto | 2018-02-07 → 2018-02-12 (+5d) |  | 10d → 7d | none → 53d |  |  |
| 4 | Fuentes consolidadas | 2018-03-07 → 2018-02-12 (-23d) | 2018-03-08 → 2018-02-13 (-23d) |  | none → 0d |  |  |
| 5 | Control de acceso a usuarios | 2018-03-09 → 2018-02-14 (-23d) | 2018-03-12 → 2018-02-15 (-25d) |  | none → 0d |  |  |
| 6 | Servicio web de acceso a datos | 2018-03-13 → 2018-02-16 (-25d) | 2018-03-14 → 2018-02-19 (-23d) |  | none → 0d |  |  |
| 7 | Estructurar tablero de control de transmisiones | 2018-03-15 → 2018-02-20 (-23d) | 2018-03-20 → 2018-02-20 (-28d) | 4d → 1d | none → 0d |  |  |
| 8 | **Sprint 2** |  | 2018-03-14 → 2018-03-09 (-5d) | 16d → 13d | none → 0d |  |  |
| 9 | Seguir y facilitar desarrollo del producto |  | 2018-03-14 → 2018-03-09 (-5d) | 16d → 13d | none → 40d | none → 7 |  |
| 10 | Visualizar vuelos en el tablero GHA |  |  |  | none → 0d | none → 7 |  |
| 11 | Registrar datos manifiesto de ingreso |  | 2018-03-07 → 2018-03-06 (-1d) | 6d → 5d | none → 0d |  | resources Yery → Ivan |
| 12 | Registrar datos manifiesto de salida | 2018-03-08 → 2018-03-07 (-1d) | 2018-03-14 → 2018-03-09 (-5d) | 5d → 3d | none → 0d |  | resources Yery → Ivan |
| 13 | **Sprint 3** | 2018-03-15 → 2018-03-12 (-3d) | 2018-04-04 → 2018-03-23 (-12d) | 15d → 10d | none → 0d |  |  |
| 14 | Seguir y facilitar desarrollo del producto | 2018-03-15 → 2018-03-12 (-3d) | 2018-04-04 → 2018-03-23 (-12d) | 15d → 10d | none → 30d | none → 12 |  |
| 15 | Leer buzon correos documentos vinculados | 2018-03-15 → 2018-03-12 (-3d) | 2018-03-21 → 2018-03-15 (-6d) | 5d → 4d | none → 0d | none → 12 |  |
| 16 | Actualizar proceso documentos vinculados | 2018-03-22 → 2018-03-16 (-6d) | 2018-03-28 → 2018-03-21 (-7d) | 5d → 4d | none → 0d |  |  |
| 17 | Transmitir vía webservice 1 | 2018-03-29 → 2018-03-22 (-7d) | 2018-04-04 → 2018-03-23 (-12d) | 5d → 2d | none → 0d |  | resources Yery → Miguel |
| 18 | **Sprint 4** | 2018-04-05 → 2018-03-26 (-10d) | 2018-04-23 → 2018-04-10 (-13d) | 13d → 10d | none → 0d |  |  |
| 19 | Seguir y facilitar desarrollo del producto | 2018-04-05 → 2018-03-26 (-10d) | 2018-04-23 → 2018-04-10 (-13d) | 13d → 10d | none → 20d | none → 17 |  |
| 20 | Visualizar listado de guias y responsabilidades IMPO | 2018-04-05 → 2018-03-26 (-10d) | 2018-04-16 → 2018-04-03 (-13d) | 8d → 5d | none → 0d | none → 17 |  |
| 21 | Transmitir vía webservice 2 | 2018-04-17 → 2018-04-04 (-13d) | 2018-04-23 → 2018-04-10 (-13d) |  | none → 0d |  | resources Yery → Miguel |
| 22 | **Sprint 5** | 2018-04-24 → 2018-04-11 (-13d) | 2018-05-11 → 2018-04-24 (-17d) | 14d → 10d | none → 0d |  |  |
| 23 | Seguir y facilitar desarrollo del producto | 2018-04-24 → 2018-04-11 (-13d) | 2018-05-11 → 2018-04-24 (-17d) | 14d → 10d | none → 10d | none → 21 |  |
| 24 | Visualizar listado de guias y responsabilidades EXPO | 2018-04-24 → 2018-04-11 (-13d) | 2018-04-26 → 2018-04-12 (-14d) | 3d → 2d | none → 0d | none → 21 | resources Yery → Ivan |
| 25 | Visualizar indicadores del tablero GHA | 2018-04-27 → 2018-04-13 (-14d) | 2018-04-30 → 2018-04-16 (-14d) |  | none → 0d |  |  |
| 26 | Visualizar indicadores del tablero IMPO | 2018-05-01 → 2018-04-17 (-14d) | 2018-05-02 → 2018-04-18 (-14d) |  | none → 0d |  |  |
| 27 | Visualizar indicadores del tablero EXPO | 2018-05-03 → 2018-04-19 (-14d) | 2018-05-04 → 2018-04-19 (-15d) | 2d → 1d | none → 0d |  |  |
| 28 | Modificar estado del vuelo | 2018-05-07 → 2018-04-20 (-17d) | 2018-05-08 → 2018-04-20 (-18d) | 2d → 1d | none → 0d |  | resources Ivan → Miguel |
| 29 | Modificar estado de las guias | 2018-05-09 → 2018-04-23 (-16d) | 2018-05-10 → 2018-04-23 (-17d) | 2d → 1d | none → 0d |  | resources Ivan → Miguel |
| 30 | Modificar estado de las responsabilidades | 2018-05-11 → 2018-04-24 (-17d) | 2018-05-11 → 2018-04-24 (-17d) |  | none → 0d |  | resources Ivan → Miguel |
| 31 | **Sprint 6** | 2018-05-11 → 2018-04-25 (-16d) | 2018-05-29 → 2018-05-08 (-21d) | 13d → 10d | none → 0d |  |  |
| 32 | Seguir y facilitar desarrollo del producto | 2018-05-11 → 2018-04-25 (-16d) | 2018-05-29 → 2018-05-08 (-21d) | 13d → 10d | none → 0d | none → 30 |  |
| 33 | Afinar diseño del tablero | 2018-05-11 → 2018-04-25 (-16d) | 2018-05-17 → 2018-04-27 (-20d) | 5d → 3d | none → 0d | none → 30 | resources Ivan → Ivan; Miguel |
| 34 | Ingresar y/o actualizar bd de tablas maestras | 2018-05-18 → 2018-04-30 (-18d) | 2018-05-24 → 2018-05-02 (-22d) | 5d → 3d | none → 0d |  | resources Ivan; Yery → Ivan; Miguel |
| 35 | Realizar pruebas funcionales | 2018-05-25 → 2018-05-03 (-22d) | 2018-05-29 → 2018-05-08 (-21d) | 3d → 4d | none → 0d |  | resources Ivan; Yery → Ivan; Miguel |

## Version 4 (saved 2018-03-12, file CronogramaTransmisiones.mpp)

Note of the change: update cronograma

Last finish stays 2018-05-08. Complete tasks 0 → 9.

Changed:

| ID | Task | Start | Finish | Complete | Total float |
| --- | --- | --- | --- | --- | --- |
| 1 | **Control Tablero Transmisiones** | 2018-02-12 A |  | 0% → 33% |  |
| 2 | **Sprint 1** | 2018-02-12 A | 2018-02-20 A | 0% → 100% | 0d → none |
| 3 | Seguir y facilitar desarrollo del producto | 2018-02-12 A | 2018-02-20 A | 0% → 100% | 53d → none |
| 4 | Fuentes consolidadas | 2018-02-12 A | 2018-02-13 A | 0% → 100% | 0d → none |
| 5 | Control de acceso a usuarios | 2018-02-14 A | 2018-02-15 A | 0% → 100% | 0d → none |
| 6 | Servicio web de acceso a datos | 2018-02-16 A | 2018-02-19 A | 0% → 100% | 0d → none |
| 7 | Estructurar tablero de control de transmisiones | 2018-02-20 A | 2018-02-20 A | 0% → 100% | 0d → none |
| 8 | **Sprint 2** | 2018-02-21 A | 2018-03-09 A | 0% → 100% | 0d → none |
| 9 | Seguir y facilitar desarrollo del producto | 2018-02-21 A | 2018-03-09 A | 0% → 100% | 40d → none |
| 10 | Visualizar vuelos en el tablero GHA | 2018-02-21 A | 2018-02-27 A | 0% → 100% | 0d → none |
| 11 | Registrar datos manifiesto de ingreso | 2018-02-28 A | 2018-03-06 A | 0% → 100% | 0d → none |
| 12 | Registrar datos manifiesto de salida | 2018-03-07 A | 2018-03-09 A | 0% → 100% | 0d → none |

## Version 5 (saved 2018-03-20, file Proyecto Transmision - CronogramaV3.mpp)

Note of the change: UPADTE

Last finish 2018-05-08 → 2018-05-09 (+1d). Complete tasks 9 → 15.

Added:

| ID | Task | Duration | Start | Finish | Predecessors | Resources |
| --- | --- | --- | --- | --- | --- | --- |
| 17 | Formulario de control de acceso de usuario al tablero | 1d | 2018-03-12 A | 2018-03-12 |  | Ivan |
| 18 | Como GHA quiero visualizar el listado de mis vuelos | 1d | 2018-03-12 A | 2018-03-13 | 17 | Ivan |
| 19 | Como GHA quiero visualizar mis obligaciones | 1d | 2018-03-12 A | 2018-03-13 | 18 | Ivan |
| 20 | Como GHA quiero visualizar el avance de mis obligaciones | 1d | 2018-03-12 A | 2018-03-14 | 19 | Ivan |
| 21 | Como GHA quiero visualizar el estado de mis obligaciones a través de mis indicadores | 1d | 2018-03-12 A | 2018-03-14 | 20 | Ivan |
| 22 | Como GHA quiero capturar y registrar el ingreso de la fecha de llegada de un vuelo | 1d | 2018-02-12 A | 2018-03-15 | 21 | Ivan |
| 23 | Como GHA quiero capturar y almacenar el screen del "registro de llegada de un vuelo" | 1d | 2018-03-12 A | 2018-03-15 | 22 | Ivan |
| 24 | Como GHA quiero capturar y registrar el ingreso de la fecha del termino de descarga | 1d | 2018-03-12 A | 2018-03-16 | 23 | Ivan |
| 25 | Como GHA quiero capturar y almacenar el screen del "registro de la fecha de termino de descarga" | 1d | 2018-03-12 A | 2018-03-16 | 24 | Ivan |
| 26 | Como GHA quiero capturar y registrar el ingreso del termino de embarque | 1d | 2018-03-12 A | 2018-03-19 | 25 | Ivan |
| 27 | Como GHA quiero capturar y almacenar el screen del "registro de término de embarque" | 0.5d | 2018-03-12 A | 2018-03-12 A | 26 | Ivan |
| 28 | Como GHA quiero capturar y registrar el ingreso de la fecha de autorización de la carga | 0.5d | 2018-02-12 A | 2018-02-12 A | 27 | Ivan |
| 29 | Como GHA quiero capturar y almacenar el screen del "registro de autorización de la carga" | 0.5d | 2018-02-12 A | 2018-02-12 A | 28 | Ivan |

Changed:

| ID | Task | Start | Finish | Duration | Complete | Total float | Predecessors | Other |
| --- | --- | --- | --- | --- | --- | --- | --- | --- |
| 1 | **Control Tablero Transmisiones** |  | 2018-05-08 → 2018-05-09 (+1d) | 60d → 61d | 33% → 50% |  |  | baseline start none → 2018-02-12; baseline finish none → 2018-05-08 |
| 2 | **Sprint 1** |  |  |  |  |  |  | baseline start none → 2018-02-12; baseline finish none → 2018-02-20 |
| 3 | Seguir y facilitar desarrollo del producto |  |  |  |  |  |  | baseline start none → 2018-02-12; baseline finish none → 2018-02-20 |
| 4 | Fuentes consolidadas |  |  |  |  |  |  | baseline start none → 2018-02-12; baseline finish none → 2018-02-13 |
| 5 | Control de acceso a usuarios |  |  |  |  |  |  | baseline start none → 2018-02-14; baseline finish none → 2018-02-15 |
| 6 | Servicio web de acceso a datos |  |  |  |  |  |  | baseline start none → 2018-02-16; baseline finish none → 2018-02-19 |
| 7 | Estructurar tablero de control de transmisiones |  |  |  |  |  |  | baseline start none → 2018-02-20; baseline finish none → 2018-02-20 |
| 8 | **Sprint 2** |  |  |  |  |  |  | baseline start none → 2018-02-21; baseline finish none → 2018-03-09 |
| 9 | Seguir y facilitar desarrollo del producto |  |  |  |  |  |  | baseline start none → 2018-02-21; baseline finish none → 2018-03-09 |
| 10 | Visualizar vuelos en el tablero GHA |  |  |  |  |  |  | baseline start none → 2018-02-21; baseline finish none → 2018-02-27 |
| 11 | Registrar datos manifiesto de ingreso |  |  |  |  |  |  | baseline start none → 2018-02-28; baseline finish none → 2018-03-06 |
| 12 | Registrar datos manifiesto de salida |  |  |  |  |  | 11 → 11, 17 | baseline start none → 2018-03-07; baseline finish none → 2018-03-09 |
| 13 | **Sprint 3** | 2018-03-12 → 2018-02-12 A (-28d) | 2018-03-23 → 2018-03-26 (+3d) | 10d → 31d | 0% → 81% | 0d → 30d |  | baseline start none → 2018-03-12; baseline finish none → 2018-03-23 |
| 14 | Seguir y facilitar desarrollo del producto | 2018-03-12 A | 2018-03-23 A |  | 0% → 100% | 30d → none |  | baseline start none → 2018-03-12; baseline finish none → 2018-03-23 |
| 15 | Leer buzon correos documentos vinculados | 2018-03-12 A | 2018-03-15 A |  | 0% → 100% | 0d → none |  | resources Ivan → Yery; baseline start none → 2018-03-12; baseline finish none → 2018-03-15 |
| 16 | Actualizar proceso documentos vinculados | 2018-03-16 A | 2018-03-21 → 2018-03-22 A (+1d) | 4d → 5d | 0% → 100% | 0d → none |  | resources Ivan → Yery; baseline start none → 2018-03-16; baseline finish none → 2018-03-21 |
| 30 | Transmitir vía webservice 1 | 2018-03-22 → 2018-03-23 A (+1d) | 2018-03-23 → 2018-03-26 (+3d) |  | 0% → 40% |  |  | resources Miguel → Jimy; baseline start none → 2018-03-22; baseline finish none → 2018-03-23 |
| 31 | **Sprint 4** | 2018-03-26 → 2018-03-27 (+1d) | 2018-04-10 → 2018-04-11 (+1d) |  |  |  |  | baseline start none → 2018-03-26; baseline finish none → 2018-04-10 |
| 32 | Seguir y facilitar desarrollo del producto | 2018-03-26 → 2018-03-27 (+1d) | 2018-04-10 → 2018-04-11 (+1d) |  |  |  |  | baseline start none → 2018-03-26; baseline finish none → 2018-04-10 |
| 33 | Visualizar listado de guias y responsabilidades IMPO | 2018-03-26 → 2018-03-27 (+1d) | 2018-04-03 → 2018-04-04 (+1d) |  |  |  |  | baseline start none → 2018-03-26; baseline finish none → 2018-04-03 |
| 34 | Transmitir vía webservice 2 | 2018-04-04 → 2018-04-05 (+1d) | 2018-04-10 → 2018-04-11 (+1d) |  |  |  |  | baseline start none → 2018-04-04; baseline finish none → 2018-04-10 |
| 35 | **Sprint 5** | 2018-04-11 → 2018-04-12 (+1d) | 2018-04-24 → 2018-04-25 (+1d) |  |  |  |  | baseline start none → 2018-04-11; baseline finish none → 2018-04-24 |
| 36 | Seguir y facilitar desarrollo del producto | 2018-04-11 → 2018-04-12 (+1d) | 2018-04-24 → 2018-04-25 (+1d) |  |  |  |  | baseline start none → 2018-04-11; baseline finish none → 2018-04-24 |
| 37 | Visualizar listado de guias y responsabilidades EXPO | 2018-04-11 → 2018-04-12 (+1d) | 2018-04-12 → 2018-04-13 (+1d) |  |  |  |  | baseline start none → 2018-04-11; baseline finish none → 2018-04-12 |
| 38 | Visualizar indicadores del tablero GHA | 2018-04-13 → 2018-04-16 (+3d) | 2018-04-16 → 2018-04-17 (+1d) |  |  |  |  | baseline start none → 2018-04-13; baseline finish none → 2018-04-16 |
| 39 | Visualizar indicadores del tablero IMPO | 2018-04-17 → 2018-04-18 (+1d) | 2018-04-18 → 2018-04-19 (+1d) |  |  |  |  | baseline start none → 2018-04-17; baseline finish none → 2018-04-18 |
| 40 | Visualizar indicadores del tablero EXPO | 2018-04-19 → 2018-04-20 (+1d) | 2018-04-19 → 2018-04-20 (+1d) |  |  |  |  | baseline start none → 2018-04-19; baseline finish none → 2018-04-19 |
| 41 | Modificar estado del vuelo | 2018-04-20 → 2018-04-23 (+3d) | 2018-04-20 → 2018-04-23 (+3d) |  |  |  |  | baseline start none → 2018-04-20; baseline finish none → 2018-04-20 |
| 42 | Modificar estado de las guias | 2018-04-23 → 2018-04-24 (+1d) | 2018-04-23 → 2018-04-24 (+1d) |  |  |  |  | baseline start none → 2018-04-23; baseline finish none → 2018-04-23 |
| 43 | Modificar estado de las responsabilidades | 2018-04-24 → 2018-04-25 (+1d) | 2018-04-24 → 2018-04-25 (+1d) |  |  |  |  | baseline start none → 2018-04-24; baseline finish none → 2018-04-24 |
| 44 | **Sprint 6** | 2018-04-25 → 2018-04-26 (+1d) | 2018-05-08 → 2018-05-09 (+1d) |  |  |  |  | baseline start none → 2018-04-25; baseline finish none → 2018-05-08 |
| 45 | Seguir y facilitar desarrollo del producto | 2018-04-25 → 2018-04-26 (+1d) | 2018-05-08 → 2018-05-09 (+1d) |  |  |  |  | baseline start none → 2018-04-25; baseline finish none → 2018-05-08 |
| 46 | Afinar diseño del tablero | 2018-04-25 → 2018-04-26 (+1d) | 2018-04-27 → 2018-04-30 (+3d) |  |  |  |  | baseline start none → 2018-04-25; baseline finish none → 2018-04-27 |
| 47 | Ingresar y/o actualizar bd de tablas maestras | 2018-04-30 → 2018-05-01 (+1d) | 2018-05-02 → 2018-05-03 (+1d) |  |  |  |  | baseline start none → 2018-04-30; baseline finish none → 2018-05-02 |
| 48 | Realizar pruebas funcionales | 2018-05-03 → 2018-05-04 (+1d) | 2018-05-08 → 2018-05-09 (+1d) |  |  |  |  | baseline start none → 2018-05-03; baseline finish none → 2018-05-08 |
